# planperronbarri

Schedule from MS Project, 2015-02-13 to 2015-07-17, status date 2015-02-09.

## Calendars

- SOFT_PRESS: Mon-Thu 09:00-12:00; Fri 09:00-11:00; Sat-Sun off. Exceptions (off unless hours are given): 2015-03-16 (Inhabil), 2015-04-02 to 2015-04-10 (Vacaciones de Jesús), 2015-05-01 to 2015-05-05 (Puente Mayo).

## Resources

| Resource |
| --- |
| B |
| E |
| F |
| P |
| A |
| BP |
| ES |
| FE |
| FA |
| JS |
| JA |
| D1 |
| D2 |
| D3 |
| D3d |
| D4 |
| D5 |

## Schedule

| ID | WBS | Task | Duration | Start | Finish | Predecessors | Total slack | Free slack | Constraint | Resources | Work |
| --- | --- | --- | --- | --- | --- | --- | --- | --- | --- | --- | --- |
| 1 | 1 | **Proyecto Nutrición** | 34.88d | 2015-02-13 | 2015-07-17 |  | 0d |  |  |  | 353h |
| 2 | 1.1 | **Plan de desarrollo** | 31.38d | 2015-02-23 | 2015-07-13 |  | 1.12d |  |  |  | 278h |
| 3 | 1.1.1 | **Requerimientos** | 3d | 2015-02-23 | 2015-03-05 |  | 1.12d | 0d |  |  | 105h |
| 4 | 1.1.1.1 | Junta inicial de requerimientos | 2h | 2015-02-23 | 2015-02-23 |  | 1.12d | 0d | start no earlier than 2015-02-23 | D1; D2; D3; D4; D5 | 10h |
| 5 | 1.1.1.2 | Generación del SRS | 6h | 2015-02-23 | 2015-02-25 | 4 | 1.12d | 0d |  | D1; D2 | 12h |
| 6 | 1.1.1.3 | **Prototipo v1** | 1.38d | 2015-02-23 | 2015-02-27 | 4 | 1.12d |  |  |  | 34h |
| 7 | 1.1.1.3.1 | Generación del prototipo | 6h | 2015-02-23 | 2015-02-25 |  | 1.12d | 0d |  | D4; D3; D5 | 18h |
| 8 | 1.1.1.3.2 | Junta de validación de prototipo v1 | 2h | 2015-02-25 | 2015-02-26 | 7, 5 | 1.12d | 0d |  | D1; D2; D3; D4; D5 | 10h |
| 9 | 1.1.1.3.3 | Refinación del SRS | 3h | 2015-02-26 | 2015-02-27 | 8 | 1.38d |  |  | D1; D2 | 6h |
| 10 | 1.1.1.4 | **Prototipo v2** | 1d | 2015-02-26 | 2015-03-03 | 8 | 1.12d | 0d |  |  | 25h |
| 11 | 1.1.1.4.1 | Refinación de prototipo | 3h | 2015-02-26 | 2015-02-27 |  | 1.12d | 0d |  | D4; D3; D5 | 9h |
| 12 | 1.1.1.4.2 | Junta de validación de prototipo v2 | 2h | 2015-02-27 | 2015-03-02 | 11 | 1.12d | 0d |  | D1; D2; D3; D4; D5 | 10h |
| 13 | 1.1.1.4.3 | Refinación del SRS | 3h | 2015-03-02 | 2015-03-03 | 12 | 1.12d |  |  | D1; D2 | 6h |
| 14 | 1.1.1.5 | Verificación del SRS | 3h | 2015-03-03 | 2015-03-04 | 10 | 1.5d |  |  | D3; D4 | 6h |
| 15 | 1.1.1.6 | Generación del plan de pruebas de sistema | 6h | 2015-03-03 | 2015-03-05 | 10 | 1.12d |  |  | D1; D2; D5 | 18h |
| 16 | 1.1.2 | **Diseño** | 5.12d | 2015-03-06 | 2015-03-30 | 113 | 1.12d | 0d |  |  | 173h |
| 17 | 1.1.2.1 | Generación del plan de configuración | 6h | 2015-03-06 | 2015-03-10 |  | 4.38d |  |  | D1; D2 | 12h |
| 18 | 1.1.2.2 | Diagrama de actividades | 6h | 2015-03-06 | 2015-03-10 |  | 3.25d |  |  | D3 | 6h |
| 19 | 1.1.2.3 | Diagrama de casos de uso | 6h | 2015-03-06 | 2015-03-10 |  | 1.12d | 0d |  | D4; D5 | 12h |
| 20 | 1.1.2.4 | **Casos de uso** | 3.25d | 2015-03-10 | 2015-03-24 | 19 | 1.12d | 0d |  |  | 75h |
| 21 | 1.1.2.4.1 | **Interfaz web** | 3.25d | 2015-03-10 | 2015-03-24 |  | 1.12d |  |  |  | 50h |
| 22 | 1.1.2.4.1.1 | Reporte de dieta | 2h | 2015-03-10 | 2015-03-11 |  | 1.12d | 0d |  | D1 | 2h |
| 23 | 1.1.2.4.1.2 | Reporte de recomendaciones al paciente | 2h | 2015-03-11 | 2015-03-11 | 22 | 1.12d | 0d |  | D1 | 2h |
| 24 | 1.1.2.4.1.3 | Reporte de diagnóstico clínico | 2h | 2015-03-12 | 2015-03-12 | 23 | 1.12d | 0d |  | D1 | 2h |
| 25 | 1.1.2.4.1.4 | Datos alimentarios | 2h | 2015-03-12 | 2015-03-13 | 24 | 1.12d | 0d |  | D1 | 2h |
| 26 | 1.1.2.4.1.5 | Datos del paciente | 2h | 2015-03-13 | 2015-03-17 | 25 | 1.12d | 0d |  | D1 | 2h |
| 27 | 1.1.2.4.1.6 | Datos antropométricos | 5h | 2015-03-17 | 2015-03-18 | 26 | 1.12d | 0d |  | D1 | 5h |
| 28 | 1.1.2.4.1.7 | Datos biquímicos | 5h | 2015-03-19 | 2015-03-20 | 27 | 1.12d | 0d |  | D1 | 5h |
| 29 | 1.1.2.4.1.8 | Datos clínicos | 2h | 2015-03-23 | 2015-03-23 | 28 | 1.12d | 0d |  | D1 | 2h |
| 30 | 1.1.2.4.1.9 | Equivalentes | 2h | 2015-03-23 | 2015-03-24 | 29 | 1.12d | 0d |  | D1 | 2h |
| 31 | 1.1.2.4.1.10 | Datos dietéticos | 2h | 2015-03-24 | 2015-03-24 | 30 | 1.12d |  |  | D1 | 2h |
| 32 | 1.1.2.4.1.11 | Catálogo de ingredientes | 5h | 2015-03-10 | 2015-03-12 |  | 17.12d | 0d |  | D2 | 5h |
| 33 | 1.1.2.4.1.12 | Interfaz de reportes | 1h | 2015-03-12 | 2015-03-12 | 32 | 17.12d | 0d |  | D2 | 1h |
| 34 | 1.1.2.4.1.13 | Interfaz de administración | 1h | 2015-03-12 | 2015-03-12 | 33 | 17.12d | 0d |  | D2 | 1h |
| 35 | 1.1.2.4.1.14 | Administración de utensilios base | 5h | 2015-03-13 | 2015-03-17 | 34 | 1.38d | 0d |  | D2 | 5h |
| 36 | 1.1.2.4.1.15 | Administración de tips | 2h | 2015-03-18 | 2015-03-18 | 35 | 1.38d | 0d |  | D2 | 2h |
| 37 | 1.1.2.4.1.16 | Generación de dieta | 5h | 2015-03-18 | 2015-03-20 | 36 | 0.25d | 0d |  | D2 | 5h |
| 38 | 1.1.2.4.1.17 | Interfaz nutrición comunitaria | 2h | 2015-03-20 | 2015-03-23 | 37 | 0.25d | 0d |  | D2 | 2h |
| 39 | 1.1.2.4.1.18 | Datos relacionados a la comunidad | 2h | 2015-03-23 | 2015-03-23 | 38 | 0.25d | 0d |  | D2 | 2h |
| 40 | 1.1.2.4.1.19 | Datos base | 1h | 2015-03-24 | 2015-03-24 | 39 | 1.38d |  |  | D2 | 1h |

| ID | WBS | Task | Duration | Start | Finish | Predecessors | Total slack | Free slack | Resources | Work |
| --- | --- | --- | --- | --- | --- | --- | --- | --- | --- | --- |
| 41 | 1.1.2.4.2 | **Interfaz móvil** | 3.12d | 2015-03-10 | 2015-03-24 |  | 1.25d |  |  | 25h |
| 42 | 1.1.2.4.2.1 | Interfaz de recordatorios | 2h | 2015-03-10 | 2015-03-11 |  | 0.12d | 0d | D3 | 2h |
| 43 | 1.1.2.4.2.2 | Horario de comida | 1h | 2015-03-11 | 2015-03-11 | 42 | 0.12d | 0d | D3 | 1h |
| 44 | 1.1.2.4.2.3 | Cita con el nutriólogo | 2h | 2015-03-11 | 2015-03-12 | 43 | 0.12d | 0d | D3 | 2h |
| 45 | 1.1.2.4.2.4 | Dieta | 5h | 2015-03-12 | 2015-03-17 | 44 | 0.12d | 0d | D3 | 5h |
| 46 | 1.1.2.4.2.5 | Sugerencias dieta | 5h | 2015-03-17 | 2015-03-18 | 45 | 0.12d | 0d | D3 | 5h |
| 47 | 1.1.2.4.2.6 | Seguimiento del paciente | 2h | 2015-03-19 | 2015-03-19 | 46 | 1.25d | 0d | D3 | 2h |
| 48 | 1.1.2.4.2.7 | Tips de nutrición | 2h | 2015-03-19 | 2015-03-20 | 47 | 0.12d | 0d | D3 | 2h |
| 49 | 1.1.2.4.2.8 | Consentimiento informado | 1h | 2015-03-20 | 2015-03-20 | 48 | 0.12d | 0d | D3 | 1h |
| 50 | 1.1.2.4.2.9 | Utensilios base | 5h | 2015-03-23 | 2015-03-24 | 49 | 1.25d |  | D3 | 5h |
| 51 | 1.1.2.5 | Diagrama E-R | 8h | 2015-03-10 | 2015-03-13 | 19 | 1.12d | 0d | D4 | 8h |
| 52 | 1.1.2.6 | Generación del plan de pruebas de integración | 15h | 2015-03-13 | 2015-03-23 | 51 | 1.12d |  | D4 | 15h |
| 53 | 1.1.2.7 | Junta de validación de diseño | 6h | 2015-03-25 | 2015-03-26 | 18, 20, 51 | 1.12d | 0d | D4; D5; D1; D2; D3 | 30h |
| 54 | 1.1.2.8 | Validación del plan de pruebas de integración | 3h | 2015-03-27 | 2015-03-30 | 52, 53 | 1.12d |  | D1; D2; D3; D4; D5 | 15h |
| 55 | 1.1.3 | **Construcción** | 13.88d | 2015-03-31 | 2015-06-08 | 114 | 1.12d | 0d |  |  |
| 56 | 1.1.3.1 | Generación de base de datos | 6h | 2015-03-31 | 2015-04-13 |  | 1.12d | 0d |  |  |
| 57 | 1.1.3.2 | Llenado de tablas de la BD | 15h | 2015-04-13 | 2015-04-20 | 56 | 1.12d | 0d |  |  |
| 58 | 1.1.3.3 | **Aplicación web** | 11.25d | 2015-04-20 | 2015-06-08 | 57 | 1.12d |  |  |  |
| 59 | 1.1.3.3.1 | Página principal | 8h | 2015-04-20 | 2015-04-23 |  | 1.12d | 0d |  |  |
| 60 | 1.1.3.3.2 | Reporte de dieta | 8h | 2015-04-23 | 2015-04-28 | 59 | 1.12d | 0d |  |  |
| 61 | 1.1.3.3.3 | Reporte de recomendaciones al paciente | 8h | 2015-04-28 | 2015-04-30 | 60 | 1.12d | 0d |  |  |
| 62 | 1.1.3.3.4 | Reporte de diagnóstico clínico | 8h | 2015-05-06 | 2015-05-08 | 61 | 1.12d | 0d |  |  |
| 63 | 1.1.3.3.5 | Datos alimentarios | 8h | 2015-05-11 | 2015-05-13 | 62 | 1.12d | 0d |  |  |
| 64 | 1.1.3.3.6 | Datos del paciente | 8h | 2015-05-13 | 2015-05-18 | 63 | 1.12d | 0d |  |  |
| 65 | 1.1.3.3.7 | Datos antropométricos | 21h | 2015-05-18 | 2015-05-27 | 64 | 1.12d | 0d |  |  |
| 66 | 1.1.3.3.8 | Datos biquímicos | 21h | 2015-05-28 | 2015-06-08 | 65 | 1.12d |  |  |  |
| 67 | 1.1.3.3.9 | Datos clínicos | 8h | 2015-04-20 | 2015-04-23 |  | 1d | 0d |  |  |
| 68 | 1.1.3.3.10 | Equivalentes | 8h | 2015-04-23 | 2015-04-28 | 67 | 1d | 0d |  |  |
| 69 | 1.1.3.3.11 | Datos dietéticos | 8h | 2015-04-28 | 2015-04-30 | 68 | 1d | 0d |  |  |
| 70 | 1.1.3.3.12 | Catálogo de ingredientes | 21h | 2015-05-06 | 2015-05-15 | 69 | 2.12d | 0d |  |  |
| 71 | 1.1.3.3.13 | Interfaz de reportes | 4h | 2015-05-15 | 2015-05-18 | 70 | 1d | 0d |  |  |
| 72 | 1.1.3.3.14 | Interfaz de administración | 4h | 2015-05-19 | 2015-05-20 | 71 | 2.12d | 0d |  |  |
| 73 | 1.1.3.3.15 | Administración de utensilios base | 21h | 2015-05-20 | 2015-05-29 | 72 | 1d | 0d |  |  |
| 74 | 1.1.3.3.16 | Administración de tips | 8h | 2015-06-01 | 2015-06-03 | 73 | 2.12d |  |  |  |
| 75 | 1.1.3.3.17 | Generación de dieta | 21h | 2015-04-20 | 2015-04-29 |  | 3.62d | 0d |  |  |
| 76 | 1.1.3.3.18 | Interfaz nutrición comunitaria | 8h | 2015-04-30 | 2015-05-07 | 75 | 4.75d | 0d |  |  |
| 77 | 1.1.3.3.19 | Datos relacionados a la comunidad | 8h | 2015-05-07 | 2015-05-12 | 76 | 3.62d | 0d |  |  |
| 78 | 1.1.3.3.20 | Datos base | 4h | 2015-05-12 | 2015-05-13 | 77 | 3.62d | 0d |  |  |

| ID | WBS | Task | Duration | Start | Finish | Predecessors | Total slack | Free slack |
| --- | --- | --- | --- | --- | --- | --- | --- | --- |
| 79 | 1.1.3.4 | **Aplicación móvil** | 10.38d | 2015-04-20 | 2015-06-03 | 57 | 2d |  |
| 80 | 1.1.3.4.1 | Interfaz de recordatorios | 8h | 2015-05-14 | 2015-05-18 | 78 | 4.75d | 0d |
| 81 | 1.1.3.4.2 | Horario de comida | 4h | 2015-05-19 | 2015-05-20 | 80 | 4.75d | 0d |
| 82 | 1.1.3.4.3 | Cita con el nutriólogo | 8h | 2015-05-20 | 2015-05-25 | 81 | 3.62d |  |
| 83 | 1.1.3.4.4 | Dieta | 21h | 2015-04-20 | 2015-04-29 |  | 0.88d | 0d |
| 84 | 1.1.3.4.5 | Sugerencias dieta | 21h | 2015-04-30 | 2015-05-14 | 83 | 2d | 0d |
| 85 | 1.1.3.4.6 | Seguimiento del paciente | 8h | 2015-05-14 | 2015-05-19 | 84 | 0.88d | 0d |
| 86 | 1.1.3.4.7 | Tips de nutrición | 8h | 2015-05-19 | 2015-05-21 | 85 | 0.88d | 0d |
| 87 | 1.1.3.4.8 | Consentimiento informado | 4h | 2015-05-22 | 2015-05-25 | 86 | 2d | 0d |
| 88 | 1.1.3.4.9 | Utensilios base | 21h | 2015-05-25 | 2015-06-03 | 87 | 0.88d |  |
| 89 | 1.1.4 | **Pruebas** | 3.38d | 2015-06-09 | 2015-06-23 | 115 | 1.12d | 0d |
| 90 | 1.1.4.1 | **Pruebas de integración** | 3.38d | 2015-06-09 | 2015-06-23 |  | 1.12d |  |
| 91 | 1.1.4.1.1 | PI1 | 9h | 2015-06-09 | 2015-06-12 |  | 1.12d | 0d |
| 92 | 1.1.4.1.2 | PI2 | 9h | 2015-06-15 | 2015-06-17 | 91 | 1.12d | 0d |
| 93 | 1.1.4.1.3 | PI3 | 9h | 2015-06-18 | 2015-06-23 | 92 | 1.12d |  |
| 94 | 1.1.4.1.4 | PI4 | 9h | 2015-06-09 | 2015-06-12 |  | 1.12d | 0d |
| 95 | 1.1.4.1.5 | PI5 | 9h | 2015-06-15 | 2015-06-17 | 94 | 1.12d | 0d |
| 96 | 1.1.4.1.6 | PI6 | 9h | 2015-06-18 | 2015-06-23 | 95 | 1.12d |  |
| 97 | 1.1.4.1.7 | PI7 | 9h | 2015-06-09 | 2015-06-12 |  | 1.12d | 0d |
| 98 | 1.1.4.1.8 | PI8 | 9h | 2015-06-15 | 2015-06-17 | 97 | 1.12d | 0d |
| 99 | 1.1.4.1.9 | PI9 | 9h | 2015-06-18 | 2015-06-23 | 98 | 1.12d |  |
| 100 | 1.1.4.1.10 | PI10 | 9h | 2015-06-09 | 2015-06-12 |  | 1.12d | 0d |
| 101 | 1.1.4.1.11 | PI11 | 9h | 2015-06-15 | 2015-06-17 | 100 | 1.12d | 0d |
| 102 | 1.1.4.1.12 | PI12 | 9h | 2015-06-18 | 2015-06-23 | 101 | 1.12d |  |

| ID | WBS | Task | Duration | Start | Finish | Predecessors | Total slack | Free slack | Constraint | Resources | Work |
| --- | --- | --- | --- | --- | --- | --- | --- | --- | --- | --- | --- |
| 103 | 1.1.4.2 | **Pruebas de sistema** | 1.12d | 2015-06-09 | 2015-06-12 |  | 3.38d |  |  |  |  |
| 104 | 1.1.4.2.1 | PS1 | 9h | 2015-06-09 | 2015-06-12 |  | 3.38d |  |  |  |  |
| 105 | 1.1.4.2.2 | PS2 | 9h | 2015-06-09 | 2015-06-12 |  | 3.38d |  |  |  |  |
| 106 | 1.1.4.2.3 | PS3 | 9h | 2015-06-09 | 2015-06-12 |  | 3.38d |  |  |  |  |
| 107 | 1.1.4.2.4 | PS4 | 9h | 2015-06-09 | 2015-06-12 |  | 3.38d |  |  |  |  |
| 108 | 1.1.5 | **Implementación** | 4.5d | 2015-06-24 | 2015-07-13 | 116 | 1.12d | 0d |  |  |  |
| 109 | 1.1.5.1 | Generación del manual de usuario | 15h | 2015-06-24 | 2015-07-01 |  | 1.12d | 0d |  |  |  |
| 110 | 1.1.5.2 | Instalación | 9h | 2015-07-01 | 2015-07-06 | 109 | 1.12d | 0d |  |  |  |
| 111 | 1.1.5.3 | Capacitación | 12h | 2015-07-07 | 2015-07-13 | 110 | 1.12d |  |  |  |  |
| 112 | 1.2 | **Plan de administración** | 34.88d | 2015-02-13 | 2015-07-17 |  | 0d |  |  |  | 75h |
| 113 | 1.2.1 | Junta de milestone (requerimientos) | 3h | 2015-03-05 | 2015-03-06 | 3 | 1.12d | 0d |  | D1; D2; D3; D4; D5 | 15h |
| 114 | 1.2.2 | Junta de milestone (diseño) | 3h | 2015-03-30 | 2015-03-31 | 16 | 1.12d | 0d |  | D1; D2; D3; D4; D5 | 15h |
| 115 | 1.2.3 | Junta de milestone (construcción) | 3h | 2015-06-08 | 2015-06-09 | 55 | 1.12d | 0d |  | D1; D2; D3; D4; D5 | 15h |
| 116 | 1.2.4 | Junta de milestone (pruebas) | 3h | 2015-06-23 | 2015-06-24 | 89 | 1.12d | 0d |  | D1; D2; D3; D4; D5 | 15h |
| 117 | 1.2.5 | Junta de postmortem | 3h | 2015-07-13 | 2015-07-14 | 108 | 1.12d |  |  | D1; D2; D3; D4; D5 | 15h |
| 118 | 1.2.6 | **Juntas de estatus** | 34.88d | 2015-02-13 | 2015-07-17 |  | 0d |  |  |  |  |
| 119 | 1.2.6.1 | Juntas de estatus 1 | 1h | 2015-02-13 | 2015-02-13 |  | 34.75d |  | start no earlier than 2015-02-13 |  |  |
| 120 | 1.2.6.2 | Juntas de estatus 2 | 1h | 2015-02-20 | 2015-02-20 |  | 33d |  | start no earlier than 2015-02-20 |  |  |
| 121 | 1.2.6.3 | Juntas de estatus 3 | 1h | 2015-02-27 | 2015-02-27 |  | 31.25d |  | start no earlier than 2015-02-27 |  |  |
| 122 | 1.2.6.4 | Juntas de estatus 4 | 1h | 2015-03-06 | 2015-03-06 |  | 29.5d |  | start no earlier than 2015-03-06 |  |  |
| 123 | 1.2.6.5 | Juntas de estatus 5 | 1h | 2015-03-13 | 2015-03-13 |  | 27.75d |  | start no earlier than 2015-03-13 |  |  |
| 124 | 1.2.6.6 | Juntas de estatus 6 | 1h | 2015-03-20 | 2015-03-20 |  | 26.38d |  | start no earlier than 2015-03-20 |  |  |
| 125 | 1.2.6.7 | Juntas de estatus 7 | 1h | 2015-03-27 | 2015-03-27 |  | 24.62d |  | start no earlier than 2015-03-27 |  |  |
| 126 | 1.2.6.8 | Juntas de estatus 8 | 1h | 2015-04-13 | 2015-04-13 |  | 23.25d |  | start no earlier than 2015-04-03 |  |  |
| 127 | 1.2.6.9 | Juntas de estatus 9 | 1h | 2015-04-13 | 2015-04-13 |  | 23.25d |  | start no earlier than 2015-04-10 |  |  |
| 128 | 1.2.6.10 | Juntas de estatus 10 | 1h | 2015-04-17 | 2015-04-17 |  | 21.75d |  | start no earlier than 2015-04-17 |  |  |
| 129 | 1.2.6.11 | Juntas de estatus 11 | 1h | 2015-04-24 | 2015-04-24 |  | 20d |  | start no earlier than 2015-04-24 |  |  |
| 130 | 1.2.6.12 | Juntas de estatus 12 | 1h | 2015-05-06 | 2015-05-06 |  | 18.25d |  | start no earlier than 2015-05-01 |  |  |
| 131 | 1.2.6.13 | Juntas de estatus 13 | 1h | 2015-05-08 | 2015-05-08 |  | 17.5d |  | start no earlier than 2015-05-08 |  |  |
| 132 | 1.2.6.14 | Juntas de estatus 14 | 1h | 2015-05-15 | 2015-05-15 |  | 15.75d |  | start no earlier than 2015-05-15 |  |  |
| 133 | 1.2.6.15 | Juntas de estatus 15 | 1h | 2015-05-22 | 2015-05-22 |  | 14d |  | start no earlier than 2015-05-22 |  |  |
| 134 | 1.2.6.16 | Juntas de estatus 16 | 1h | 2015-05-29 | 2015-05-29 |  | 12.25d |  | start no earlier than 2015-05-29 |  |  |
| 135 | 1.2.6.17 | Juntas de estatus 17 | 1h | 2015-06-05 | 2015-06-05 |  | 10.5d |  | start no earlier than 2015-06-05 |  |  |
| 136 | 1.2.6.18 | Juntas de estatus 18 | 1h | 2015-06-12 | 2015-06-12 |  | 8.75d |  | start no earlier than 2015-06-12 |  |  |
| 137 | 1.2.6.19 | Juntas de estatus 19 | 1h | 2015-06-19 | 2015-06-19 |  | 7d |  | start no earlier than 2015-06-19 |  |  |
| 138 | 1.2.6.20 | Juntas de estatus 20 | 1h | 2015-06-26 | 2015-06-26 |  | 5.25d |  | start no earlier than 2015-06-26 |  |  |
| 139 | 1.2.6.21 | Juntas de estatus 21 | 1h | 2015-07-03 | 2015-07-03 |  | 3.5d |  | start no earlier than 2015-07-03 |  |  |
| 140 | 1.2.6.22 | Juntas de estatus 22 | 1h | 2015-07-10 | 2015-07-10 |  | 1.75d |  | start no earlier than 2015-07-10 |  |  |
| 141 | 1.2.6.23 | Juntas de estatus 23 | 1h | 2015-07-17 | 2015-07-17 |  | 0d |  | start no earlier than 2015-07-17 |  |  |
